# WBSTool Project

Schedule from ProjectLibre, 2019-01-01 to 2019-04-29.

## Calendars

- Standard: Mon-Fri 08:00-12:00, 13:00-17:00; Sat-Sun off.

## Resources

| Resource |
| --- |
| No Asignado |
| Programador Junior1 |
| Programador Junior2 |
| Analista-Diseñador |
| Analista-Programador |
| Programador Senior |
| Director de proyecto |

## Schedule

| ID | WBS | Task | Duration | Start | Finish | Predecessors | Constraint | Resources |
| --- | --- | --- | --- | --- | --- | --- | --- | --- |
| 1 | 1 | **Proyecto de sistema para bar tecnológico** | 84.71d | 2019-01-01 08:00 | 2019-04-29 14:40 |  | start no earlier than 2019-01-01 08:00 |  |
| 2 | 1.1 | **Respuestas iniciales a riesgos** | 1.5d | 2019-01-01 08:00 | 2019-01-02 13:00 |  |  |  |
| 3 | 1.1.1 | Crear Plan de incentivos | 0.5d | 2019-01-01 08:00 | 2019-01-01 13:00 |  |  |  |
| 4 | 1.1.2 | Plan de comportamiento | 0.5d | 2019-01-01 13:00 | 2019-01-01 17:00 | 3 |  |  |
| 5 | 1.1.3 | Crear plan de errores y problemas | 0.5d | 2019-01-02 08:00 | 2019-01-02 13:00 | 4 |  |  |
| 6 | 1.1 | **Análisis de requisitos del sistema** | 18.25d | 2019-01-02 13:00 | 2019-01-28 15:00 | 2 |  |  |
| 7 | 1.1.1 | **Identificación de las necesidades del cliente** | 4.5d | 2019-01-02 13:00 | 2019-01-08 17:00 |  |  |  |
| 8 | 1.1.1.1 | **Especificación informal del sistema** | 4.5d | 2019-01-02 13:00 | 2019-01-08 17:00 |  |  |  |
| 9 | 1.1.1.1.1 | **Técnica de obtención de requisitos** | 3d | 2019-01-02 13:00 | 2019-01-07 13:00 |  |  |  |
| 10 | 1.2.1.1.1.1 | Preparar preguntas y temáticas para entrevista inicial | 0.5d | 2019-01-02 13:00 | 2019-01-02 17:00 |  |  | Analista-Diseñador |
| 11 | 1.2.1.1.1.2 | Entrevistar jefe de proyecto | 0.5d | 2019-01-03 08:00 | 2019-01-03 13:00 | 10 |  | Analista-Diseñador; Director de proyecto |
| 12 | 1.2.1.1.1.3 | Cuestionar futuros empleados para conocer sus necesidades | 1d | 2019-01-03 13:00 | 2019-01-04 13:00 | 11 |  | Analista-Diseñador |
| 13 | 1.2.1.1.1.4 | Cuestionar posibles clientes para conocer sus preferencias | 1d | 2019-01-04 13:00 | 2019-01-07 13:00 | 12 |  | Analista-Diseñador |
| 14 | 1.1.1.2 | **Determinación informal de aspectos del sistema** | 1.5d | 2019-01-07 13:00 | 2019-01-08 17:00 | 9 |  |  |
| 15 | 1.2.1.1.2.1 | Determinar necesidades de jefe de proyectos | 0.5d | 2019-01-07 13:00 | 2019-01-07 17:00 |  |  | Analista-Diseñador; Director de proyecto |
| 16 | 1.1.1.2.1 | **Determinación informal de funciones** | 0.6d | 2019-01-08 08:00 | 2019-01-08 13:48 | 15 |  |  |
| 17 | 1.2.1.1.2.2.1 | Cuestionar futuros empleados para conocer sus necesidades | 0.1d | 2019-01-08 08:00 | 2019-01-08 08:48 |  |  | Analista-Diseñador |
| 18 | 1.2.1.1.2.2.2 | Cuestionar posibles clientes para conocer sus preferencias | 0.1d | 2019-01-08 13:00 | 2019-01-08 13:48 | 29 | start no earlier than 2019-01-04 11:12 | Analista-Diseñador |
| 19 | 1.1.1.2.2 | **Determinación informal de información manejada** | 0.6d | 2019-01-08 08:48 | 2019-01-08 14:36 | 15 |  |  |
| 20 | 1.2.1.1.2.3.1 | Cuestionar futuros empleados para conocer sus necesidades | 0.1d | 2019-01-08 08:48 | 2019-01-08 09:36 | 17 |  | Analista-Diseñador |
| 21 | 1.2.1.1.2.3.2 | Cuestionar posibles clientes para conocer sus preferencias | 0.1d | 2019-01-08 13:48 | 2019-01-08 14:36 | 18 |  | Analista-Diseñador |
| 22 | 1.1.1.2.3 | **Determinación informal de interfaces del sistema** | 0.6d | 2019-01-08 09:36 | 2019-01-08 15:24 | 15 |  |  |
| 23 | 1.2.1.1.2.4.1 | Cuestionar futuros empleados para conocer sus necesidades | 0.1d | 2019-01-08 09:36 | 2019-01-08 10:24 | 20 |  | Analista-Diseñador |
| 24 | 1.2.1.1.2.4.2 | Cuestionar posibles clientes para conocer sus preferencias | 0.1d | 2019-01-08 14:36 | 2019-01-08 15:24 | 21 |  | Analista-Diseñador |

| ID | WBS | Task | Duration | Start | Finish | Predecessors | Resources |
| --- | --- | --- | --- | --- | --- | --- | --- |
| 25 | 1.1.1.2.4 | **Determinación informal de rendimiento del sistema** | 0.6d | 2019-01-08 10:24 | 2019-01-08 16:12 | 15 |  |
| 26 | 1.2.1.1.2.5.1 | Cuestionar futuros empleados para conocer sus necesidades | 0.1d | 2019-01-08 10:24 | 2019-01-08 11:12 | 23 | Analista-Diseñador |
| 27 | 1.2.1.1.2.5.2 | Cuestionar posibles clientes para conocer sus preferencias | 0.1d | 2019-01-08 15:24 | 2019-01-08 16:12 | 24 | Analista-Diseñador |
| 28 | 1.1.1.2.5 | **Determinación informal de las restricciones del sistema** | 0.6d | 2019-01-08 11:12 | 2019-01-08 17:00 | 15 |  |
| 29 | 1.2.1.1.2.6.1 | Cuestionar futuros empleados para conocer sus necesidades | 0.1d | 2019-01-08 11:12 | 2019-01-08 13:00 | 26 | Analista-Diseñador |
| 30 | 1.2.1.1.2.6.2 | Cuestionar posibles clientes para conocer sus preferencias | 0.1d | 2019-01-08 16:12 | 2019-01-08 17:00 | 27 | Analista-Diseñador |
| 31 | 1.1.2 | **Asignación de funciones a cada elemento del sistema** | 5d | 2019-01-09 08:00 | 2019-01-15 17:00 | 7 |  |
| 32 | 1.1.2.1 | **Alternativas de creación del sistema** | 2.5d | 2019-01-09 08:00 | 2019-01-11 13:00 |  |  |
| 33 | 1.2.2.1.1 | Buscar tecnologías y metodologías alternativas | 2.5d | 2019-01-09 08:00 | 2019-01-11 13:00 |  | Analista-Diseñador |
| 34 | 1.2.2.2 | Informar del progreso de la semana al Jefe de proyecto | 0.12d | 2019-01-11 13:00 | 2019-01-11 14:00 | 32 | Analista-Diseñador; Director de proyecto |
| 35 | 1.1.2.2 | **Validación de las alternativas de creación del sistema** | 2.38d | 2019-01-11 14:00 | 2019-01-15 17:00 | 34 |  |
| 36 | 1.2.2.3.1 | Analizar las alternativas obtenidas | 1d | 2019-01-11 14:00 | 2019-01-14 14:00 |  | Analista-Diseñador |
| 37 | 1.2.2.3.2 | Comparar las alternativas con la propuesta original | 1d | 2019-01-14 14:00 | 2019-01-15 14:00 | 36 | Analista-Diseñador |
| 38 | 1.2.2.3.3 | Decidir finalmente que tecnología usar | 0.25d | 2019-01-15 14:00 | 2019-01-15 16:00 | 37 | Analista-Diseñador |
| 39 | 1.2.2.3.4 | Informar al Jefe del progreso de la semana | 0.12d | 2019-01-15 16:00 | 2019-01-15 17:00 | 38 | Analista-Diseñador; Director de proyecto |
| 40 | 1.1.3 | **Evaluación de la viabilidad del sistema** | 7.62d | 2019-01-16 08:00 | 2019-01-25 14:00 | 31 |  |
| 41 | 1.1.3.1 | **Estudio de viabilidad económico** | 2.5d | 2019-01-16 08:00 | 2019-01-18 13:00 |  |  |
| 42 | 1.2.3.1.1 | Realizar análisis de costes económicos | 0.62d | 2019-01-16 08:00 | 2019-01-16 14:00 |  | Analista-Diseñador |
| 43 | 1.2.3.1.2 | Realizar análisis de mercado | 0.62d | 2019-01-16 14:00 | 2019-01-17 10:00 | 42 | Analista-Diseñador |
| 44 | 1.2.3.1.3 | Realizar estimaciones coste-beneficio y tiempo-beneficio | 0.62d | 2019-01-17 10:00 | 2019-01-17 16:00 | 43 | Analista-Diseñador |
| 45 | 1.2.3.1.4 | Reunirse con el jefe para decidir su el proyecto se considera viable | 0.62d | 2019-01-17 16:00 | 2019-01-18 13:00 | 44 | Analista-Diseñador |
| 46 | 1.1.3.2 | **Estudio de viabilidad técnico** | 1.75d | 2019-01-18 13:00 | 2019-01-22 10:00 | 41 |  |
| 47 | 1.2.3.2.1 | Estudiar las tecnologías disponibles para el proyecto | 0.62d | 2019-01-18 13:00 | 2019-01-21 09:00 |  | Analista-Programador |
| 48 | 1.2.3.2.2 | Analizar recursos y tecnologías a las que tiene acceso la empresa | 0.25d | 2019-01-21 09:00 | 2019-01-21 11:00 | 47 | Analista-Programador |
| 49 | 1.2.3.2.3 | Analizar recursos y tecnologías de terceros que podrían comprarse o contratarse | 0.25d | 2019-01-21 11:00 | 2019-01-21 14:00 | 48 | Analista-Programador |
| 50 | 1.2.3.2.4 | Analizar con la información obtenida si el proyecto es viable | 0.62d | 2019-01-21 14:00 | 2019-01-22 10:00 | 49 | Analista-Programador |
| 51 | 1.2.3.3 | Informar al jefe del progreso semanal | 0.12d | 2019-01-22 10:00 | 2019-01-22 11:00 | 46 | Analista-Programador; Director de proyecto |

| ID | WBS | Task | Duration | Start | Finish | Predecessors | Total slack | Resources |
| --- | --- | --- | --- | --- | --- | --- | --- | --- |
| 52 | 1.1.3.3 | **Estudio de viabilidad legal** | 2d | 2019-01-22 11:00 | 2019-01-24 11:00 | 46, 51 |  |  |
| 53 | 1.2.3.4.1 | Estudiar las leyes relacionadas con la parte tecnológica del proyecto | 0.5d | 2019-01-22 11:00 | 2019-01-22 16:00 |  |  | Director de proyecto |
| 54 | 1.2.3.4.2 | Estudiar las leyes relacionadas con al parte de hostelería del proyecto | 0.5d | 2019-01-22 16:00 | 2019-01-23 11:00 | 53 |  | Director de proyecto |
| 55 | 1.2.3.4.3 | Estudiar las leyes relacionadas con salud e higiene de local | 0.5d | 2019-01-23 11:00 | 2019-01-23 16:00 | 54 |  | Director de proyecto |
| 56 | 1.2.3.4.4 | Realizar un informe sobre los estudios legales | 0.38d | 2019-01-23 16:00 | 2019-01-24 10:00 | 55 |  | Director de proyecto |
| 57 | 1.2.3.4.5 | Analizar con la información obtenida si el proyecto es legalmente viable | 0.12d | 2019-01-24 10:00 | 2019-01-24 11:00 | 56 |  | Director de proyecto |
| 58 | 1.1.3.4 | **Estudio de viabilidad de plazos** | 1.25d | 2019-01-24 11:00 | 2019-01-25 14:00 | 52 |  |  |
| 59 | 1.2.3.5.1 | Realizar análisis de costes temporales | 1d | 2019-01-24 11:00 | 2019-01-25 11:00 |  |  | Analista-Diseñador |
| 60 | 1.2.3.5.2 | Realizar planificación de distribución de trabajo | 0.25d | 2019-01-24 11:00 | 2019-01-24 14:00 |  | 75d | Analista-Diseñador |
| 61 | 1.2.3.5.3 | Determinar si el proyecto es viable en el tiempo elegido | 0.25d | 2019-01-25 11:00 | 2019-01-25 14:00 | 60, 59 |  | Analista-Diseñador |
| 62 | 1.1.4 | **Obtención de una definición del sistema** | 1.12d | 2019-01-25 14:00 | 2019-01-28 15:00 | 40 |  |  |
| 63 | 1.1.4.1 | **Especificación formal del sistema** | 0.4d | 2019-01-25 14:00 | 2019-01-28 08:12 |  |  |  |
| 64 | 1.1.4.1.1 | **Diagrama de contexto** | 0.2d | 2019-01-25 14:00 | 2019-01-25 15:36 |  |  |  |
| 65 | 1.2.4.1.1.1 | Dibujar el diagrama de contexto | 0.2d | 2019-01-25 14:00 | 2019-01-25 15:36 |  |  | Analista-Programador |
| 66 | 1.1.4.1.2 | **Diagrama de sistema** | 0.2d | 2019-01-25 15:36 | 2019-01-28 08:12 | 64 |  |  |
| 67 | 1.2.4.1.2.1 | Dibujar el diagrama de sistema | 0.2d | 2019-01-25 15:36 | 2019-01-28 08:12 |  |  | Analista-Programador |
| 68 | 1.1.4.2 | **Representación del sistema** | 0.6d | 2019-01-28 08:12 | 2019-01-28 14:00 | 63 |  |  |
| 69 | 1.1.4.2.1 | **Diagramas de flujo de datos** | 0.2d | 2019-01-28 08:12 | 2019-01-28 09:48 |  |  |  |
| 70 | 1.2.4.2.1.1 | Dibujar el diagrama de sistema | 0.2d | 2019-01-28 08:12 | 2019-01-28 09:48 |  |  | Analista-Diseñador |
| 71 | 1.1.4.2.2 | **Diagramas de flujo de control** | 0.2d | 2019-01-28 09:48 | 2019-01-28 11:24 | 69 |  |  |
| 72 | 1.2.4.2.2.1 | Dibujar el diagrama de sistema | 0.2d | 2019-01-28 09:48 | 2019-01-28 11:24 |  |  | Analista-Diseñador |
| 73 | 1.1.4.2.3 | **Diagramas del ámbito de la información** | 0.2d | 2019-01-28 11:24 | 2019-01-28 14:00 | 71 |  |  |
| 74 | 1.2.4.2.3.1 | Dibujar el diagrama de sistema | 0.2d | 2019-01-28 11:24 | 2019-01-28 14:00 |  |  | Analista-Diseñador |
| 75 | 1.2.4.3 | Informar al Jefe del progreso semanal | 0.12d | 2019-01-28 14:00 | 2019-01-28 15:00 | 68 |  | Analista-Diseñador; Director de proyecto |

| ID | WBS | Task | Duration | Start | Finish | Predecessors | Resources |
| --- | --- | --- | --- | --- | --- | --- | --- |
| 76 | 1.2 | **Análisis de requisitos del software** | 2.75d | 2019-01-28 15:00 | 2019-01-31 13:00 | 6 |  |
| 77 | 1.2.1 | **Extracción o determinación de requisitos** | 0.38d | 2019-01-28 15:00 | 2019-01-29 09:00 |  |  |
| 78 | 1.2.1.1 | **Documentos de reuniones con cliente** | 0.12d | 2019-01-28 15:00 | 2019-01-28 16:00 |  |  |
| 79 | 1.3.1.1.1 | Realizar un acta de reunión para la reunión con el cliente | 0.12d | 2019-01-28 15:00 | 2019-01-28 16:00 |  | Analista-Diseñador |
| 80 | 1.3.1.1.2 | Realizar un informe sobre las solicitudes e información que se obtuvo del cliente | 0.12d | 2019-01-28 15:00 | 2019-01-28 16:00 |  | Analista-Diseñador; Analista-Programador |
| 81 | 1.2.1.2 | **Especificación informal de requisitos software** | 0.25d | 2019-01-28 16:00 | 2019-01-29 09:00 | 78 |  |
| 82 | 1.3.1.2.1 | Redactar un primer informe de los requisitos del software a partir del informe de reunión con el cliente | 0.25d | 2019-01-28 16:00 | 2019-01-29 09:00 |  | Analista-Diseñador; Analista-Programador |
| 83 | 1.2.2 | **Análisis de requisitos** | 0.75d | 2019-01-29 09:00 | 2019-01-29 16:00 | 77 |  |
| 84 | 1.2.2.1 | **Validación de especificación informal** | 0.12d | 2019-01-29 09:00 | 2019-01-29 10:00 |  |  |
| 85 | 1.3.2.1.1 | Analizar especificación informal para posibles mejoras | 0.12d | 2019-01-29 09:00 | 2019-01-29 10:00 |  | Analista-Diseñador |
| 86 | 1.3.2.1.2 | Buscar errores en la especificación informal | 0.12d | 2019-01-29 09:00 | 2019-01-29 10:00 |  | Analista-Programador |
| 87 | 1.2.2.2 | **Resolución de inconsistencias** | 0.25d | 2019-01-29 10:00 | 2019-01-29 13:00 | 84 |  |
| 88 | 1.3.2.2.1 | Corregir errores en la especificación informal | 0.25d | 2019-01-29 10:00 | 2019-01-29 13:00 |  | Analista-Programador |
| 89 | 1.3.2.2.2 | Encontrar redundancias y discrepancias en la especificación informal | 0.25d | 2019-01-29 10:00 | 2019-01-29 13:00 |  | Analista-Diseñador |
| 90 | 1.2.2.3 | **Coordinación de requisitos relacionados** | 0.38d | 2019-01-29 13:00 | 2019-01-29 16:00 | 87 |  |
| 91 | 1.3.2.3.1 | Formar relaciones entre requisitos que tengan puntos comunes | 0.25d | 2019-01-29 13:00 | 2019-01-29 15:00 |  | Analista-Diseñador; Analista-Programador |
| 92 | 1.3.2.3.2 | Purgar relaciones redundantes | 0.12d | 2019-01-29 15:00 | 2019-01-29 16:00 | 91 | Analista-Diseñador; Analista-Programador |
| 93 | 1.2.3 | **Especificación de requisitos** | 0.75d | 2019-01-29 16:00 | 2019-01-30 14:00 | 83 |  |
| 94 | 1.2.3.1 | **Documento de especificación formal de requisitos** | 0.5d | 2019-01-29 16:00 | 2019-01-30 11:00 |  |  |
| 95 | 1.3.3.1.1 | Redactar documento de requisitos formal | 0.5d | 2019-01-29 16:00 | 2019-01-30 11:00 |  | Analista-Programador |
| 96 | 1.2.3.2 | **Revisión de documento de especificación formal** | 0.25d | 2019-01-30 11:00 | 2019-01-30 14:00 | 94 |  |
| 97 | 1.3.3.2.1 | Revisar documento de requisitos formal en busca de errores | 0.12d | 2019-01-30 11:00 | 2019-01-30 13:00 |  | Analista-Diseñador |
| 98 | 1.3.3.2.2 | Revisar documento de requisitos formal en busca de mejoras de formato y claridad | 0.12d | 2019-01-30 13:00 | 2019-01-30 14:00 | 97 | Analista-Diseñador |
| 99 | 1.2.4 | **Validación de requisitos** | 0.75d | 2019-01-30 14:00 | 2019-01-31 11:00 | 93 |  |
| 100 | 1.2.4.1 | **Reunión con cliente para validación de requisitos** | 0.25d | 2019-01-30 14:00 | 2019-01-30 16:00 |  |  |
| 101 | 1.3.4.1.1 | Redactar acta de reunión con el cliente y validar requisitos | 0.25d | 2019-01-30 14:00 | 2019-01-30 16:00 |  | Analista-Diseñador |

| ID | WBS | Task | Duration | Start | Finish | Predecessors | Total slack | Resources |
| --- | --- | --- | --- | --- | --- | --- | --- | --- |
| 102 | 1.2.4.2 | **Corrección de especificación formal** | 0.25d | 2019-01-30 16:00 | 2019-01-31 09:00 | 100 |  |  |
| 103 | 1.3.4.2.1 | Ajustar los requisitos a partir de la validación realizada | 0.25d | 2019-01-30 16:00 | 2019-01-31 09:00 |  |  | Analista-Programador |
| 104 | 1.2.4.3 | **Validación de la especificación forma corregidsa** | 0.25d | 2019-01-31 09:00 | 2019-01-31 11:00 | 102 |  |  |
| 105 | 1.3.4.3.1 | Reunirse con el cliente para realizar la validación final de requisitos | 0.25d | 2019-01-31 09:00 | 2019-01-31 11:00 |  |  | Analista-Diseñador; Analista-Programador |
| 106 | 1.3.5 | Reunirse con el jefe para informar del progreso de la semana | 0.12d | 2019-01-31 11:00 | 2019-01-31 13:00 | 99 |  | Analista-Diseñador; Analista-Programador; Director de proyecto |
| 107 | 1.3 | **Diseño del sistema software** | 24.88d | 2019-01-31 13:00 | 2019-03-07 11:00 | 76 |  |  |
| 108 | 1.4.1 | Control de riesgos y daños | 2d | 2019-01-31 13:00 | 2019-02-04 13:00 |  | 2287.5d | Director de proyecto [50%] |
| 109 | 1.3.1 | **Diseño funcional** | 6d | 2019-01-31 13:00 | 2019-02-08 13:00 |  |  |  |
| 110 | 1.3.1.1 | **Diseño módulo del camarero** | 1d | 2019-01-31 13:00 | 2019-02-01 13:00 |  |  |  |
| 111 | 1.4.2.1.1 | Realizar diseño del módulo | 1d | 2019-01-31 13:00 | 2019-02-01 13:00 |  |  | Analista-Diseñador; Analista-Programador |
| 112 | 1.3.1.2 | **Diseño módulo de gestión de proveedores** | 1d | 2019-02-01 13:00 | 2019-02-04 13:00 | 110 |  |  |
| 113 | 1.4.2.2.1 | Realizar diseño del módulo | 1d | 2019-02-01 13:00 | 2019-02-04 13:00 |  |  | Analista-Diseñador; Analista-Programador |
| 114 | 1.3.1.3 | **Diseño módulo de cocinas/barras** | 1d | 2019-02-04 13:00 | 2019-02-05 13:00 | 112 |  |  |
| 115 | 1.4.2.3.1 | Realizar diseño del módulo | 1d | 2019-02-04 13:00 | 2019-02-05 13:00 |  |  | Analista-Diseñador; Analista-Programador |
| 116 | 1.3.1.4 | **Diseño módulo para muestra de datos y comandas** | 1d | 2019-02-05 13:00 | 2019-02-06 13:00 | 114 |  |  |
| 117 | 1.4.2.4.1 | Realizar diseño del módulo | 1d | 2019-02-05 13:00 | 2019-02-06 13:00 |  |  | Analista-Diseñador; Analista-Programador |
| 118 | 1.3.1.5 | **Diseño módulo de entretenimiento** | 1d | 2019-02-06 13:00 | 2019-02-07 13:00 | 116 |  |  |
| 119 | 1.4.2.5.1 | Realizar diseño del módulo | 1d | 2019-02-06 13:00 | 2019-02-07 13:00 |  |  | Analista-Diseñador; Analista-Programador |
| 120 | 1.3.1.6 | **Diseño módulo de monitorización general del sistema** | 1d | 2019-02-07 13:00 | 2019-02-08 13:00 | 118 |  |  |
| 121 | 1.4.2.6.1 | Realizar diseño del módulo | 1d | 2019-02-07 13:00 | 2019-02-08 13:00 |  |  | Analista-Diseñador; Analista-Programador |
| 122 | 1.4.3 | Informar al jefe del progreso semanal | 0.12d | 2019-02-08 13:00 | 2019-02-08 14:00 | 109 | 1875d | Analista-Diseñador; Director de proyecto |
| 123 | 1.3.2 | **Diseño técnico** | 8.38d | 2019-02-08 13:00 | 2019-02-20 16:00 | 109 |  |  |
| 124 | 1.3.2.1 | **Selección de tecnologías** | 4.25d | 2019-02-08 13:00 | 2019-02-14 15:00 |  |  |  |
| 125 | 1.3.2.1.1 | **Base de datos a usar** | 1.5d | 2019-02-08 13:00 | 2019-02-11 17:00 |  |  |  |
| 126 | 1.4.4.1.1.1 | Comparar bases de datos disponibles | 1d | 2019-02-08 13:00 | 2019-02-11 13:00 |  |  | Analista-Programador |
| 127 | 1.4.4.1.1.2 | Elegir la opción que mejor se adapte al proyecto | 0.5d | 2019-02-11 13:00 | 2019-02-11 17:00 | 126 |  | Analista-Programador |

| ID | WBS | Task | Duration | Start | Finish | Predecessors | Total slack | Resources |
| --- | --- | --- | --- | --- | --- | --- | --- | --- |
| 128 | 1.3.2.1.2 | **Sistema operativo y aplicaciones de las tablets** | 1.5d | 2019-02-12 08:00 | 2019-02-13 13:00 | 125 |  |  |
| 129 | 1.4.4.1.2.1 | Comparar los sistemas operativos disponibles | 1d | 2019-02-12 08:00 | 2019-02-12 17:00 |  |  | Analista-Programador |
| 130 | 1.4.4.1.2.2 | Elegir la opción que mejor se adapte al proyecto | 0.5d | 2019-02-13 08:00 | 2019-02-13 13:00 | 129 |  | Analista-Programador |
| 131 | 1.3.2.1.3 | **Lenguaje de programación y consultas SQL** | 1.25d | 2019-02-13 13:00 | 2019-02-14 15:00 | 128 |  |  |
| 132 | 1.4.4.1.3.1 | Analizar que lenguaje de programación y consultas SQL se adapta mejor a nuestra BD elegida | 1.25d | 2019-02-13 13:00 | 2019-02-14 15:00 |  |  | Analista-Programador; Programador Junior1 |
| 133 | 1.4.4.1.3.2 | Analizar que lenguaje se adapta mejor a las necesidades de la empresa | 1.25d | 2019-02-13 13:00 | 2019-02-14 15:00 |  |  | Analista-Programador; Programador Junior1 |
| 134 | 1.3.2.1.4 | **Interfaces de comunicación e interoperación con otras aplicaciones** | 1d | 2019-02-08 13:00 | 2019-02-11 13:00 |  | 325d |  |
| 135 | 1.4.4.1.4.1 | Diseñar mediante diagramas y diseño informal las interfaces | 1d | 2019-02-08 13:00 | 2019-02-11 13:00 |  | 325d | Analista-Diseñador |
| 136 | 1.4.4.2 | Informar al jefe del progreso semanal | 0.12d | 2019-02-14 15:00 | 2019-02-14 16:00 | 124 |  | Analista-Diseñador; Director de proyecto |
| 137 | 1.3.2.2 | **Validación de tecnologías** | 4d | 2019-02-14 16:00 | 2019-02-20 16:00 | 136, 124 |  |  |
| 138 | 1.3.2.2.1 | **Diseño de pruebas de rendimiento de las tecnologías** | 2d | 2019-02-14 16:00 | 2019-02-18 16:00 |  |  |  |
| 139 | 1.4.4.3.1.1 | Diseñar las pruebas de rendimiento | 2d | 2019-02-14 16:00 | 2019-02-18 16:00 |  |  | Analista-Diseñador |
| 140 | 1.3.2.2.2 | **Diseño de pruebas de coste de las tecnologías** | 2d | 2019-02-18 16:00 | 2019-02-20 16:00 | 138 |  |  |
| 141 | 1.4.4.3.2.1 | Diseñar las pruebas de coste | 2d | 2019-02-18 16:00 | 2019-02-20 16:00 |  |  | Analista-Diseñador |
| 142 | 1.4.5 | Informar al jefe del progreso semanal | 0.12d | 2019-02-20 16:00 | 2019-02-20 17:00 | 123 | 1037.5d | Analista-Diseñador; Director de proyecto |
| 143 | 1.3.3 | **Diseño de pruebas** | 7.5d | 2019-02-20 16:00 | 2019-03-04 11:00 | 123 |  |  |
| 144 | 1.3.3.1 | **Diseño de pruebas de aceptación** | 3d | 2019-02-20 16:00 | 2019-02-25 16:00 |  | 300d |  |
| 145 | 1.3.3.1.1 | **Diseño de pruebas para los gerentes del local** | 1.5d | 2019-02-20 16:00 | 2019-02-22 11:00 |  | 300d |  |
| 146 | 1.4.6.1.1.1 | Redactar informe de los minimos que deben cubrir las pruebas | 0.5d | 2019-02-20 16:00 | 2019-02-21 11:00 |  | 300d | Analista-Diseñador |
| 147 | 1.4.6.1.1.2 | Diseñar las pruebas basandose en los informes | 1d | 2019-02-21 11:00 | 2019-02-22 11:00 | 146 | 300d | Analista-Diseñador |
| 148 | 1.3.3.1.2 | **Diseño de pruebas sobre el personal del local** | 1.5d | 2019-02-20 16:00 | 2019-02-22 11:00 |  |  |  |
| 149 | 1.4.6.1.2.1 | Redactar informe de los minimos que deben cubrir las pruebas | 0.5d | 2019-02-20 16:00 | 2019-02-21 11:00 |  |  | Analista-Programador |
| 150 | 1.4.6.1.2.2 | Diseñar las pruebas basandose en los informes | 1d | 2019-02-21 11:00 | 2019-02-22 11:00 | 149 |  | Analista-Programador |
| 151 | 1.3.3.1.3 | **Diseño de pruebas sobre los usuarios del local** | 1.5d | 2019-02-20 16:00 | 2019-02-22 11:00 |  | 450d |  |
| 152 | 1.4.6.1.3.1 | Redactar informe de los minimos que deben cubrir las pruebas | 0.5d | 2019-02-20 16:00 | 2019-02-21 11:00 |  | 450d | Programador Junior1; Programador Junior2 |
| 153 | 1.4.6.1.3.2 | Diseñar las pruebas basandose en los informes | 1d | 2019-02-21 11:00 | 2019-02-22 11:00 | 152 | 450d | Programador Junior1; Programador Junior2 |

| ID | WBS | Task | Duration | Start | Finish | Predecessors | Total slack | Resources |
| --- | --- | --- | --- | --- | --- | --- | --- | --- |
| 154 | 1.3.3.1.4 | **Diseño de pruebas para los proveedores** | 1.5d | 2019-02-22 11:00 | 2019-02-25 16:00 | 145 | 300d |  |
| 155 | 1.4.6.1.4.1 | Redactar informe de los minimos que deben cubrir las pruebas | 0.5d | 2019-02-22 11:00 | 2019-02-22 16:00 |  | 300d | Analista-Diseñador |
| 156 | 1.4.6.1.4.2 | Diseñar las pruebas basandose en los informes | 1d | 2019-02-22 16:00 | 2019-02-25 16:00 | 155 | 300d | Analista-Diseñador |
| 157 | 1.3.3.2 | **Diseño de pruebas del sistema** | 3d | 2019-02-22 11:00 | 2019-02-27 11:00 |  | 300d |  |
| 158 | 1.3.3.2.1 | **Diseño de pruebas para comunicación con PayPal** | 1.5d | 2019-02-22 11:00 | 2019-02-25 16:00 | 148 |  |  |
| 159 | 1.4.6.2.1.1 | Redactar informe de los minimos que deben cubrir las pruebas | 0.5d | 2019-02-22 11:00 | 2019-02-22 16:00 |  |  | Analista-Programador |
| 160 | 1.4.6.2.1.2 | Diseñar las pruebas basandose en los informes | 1d | 2019-02-22 16:00 | 2019-02-25 16:00 | 159 |  | Analista-Programador |
| 161 | 1.3.3.2.2 | **Diseño de pruebas para comunicación con terminales TPV** | 1.5d | 2019-02-22 11:00 | 2019-02-25 16:00 | 151 | 450d |  |
| 162 | 1.4.6.2.2.1 | Redactar informe de los minimos que deben cubrir las pruebas | 0.5d | 2019-02-22 11:00 | 2019-02-22 16:00 |  | 450d | Programador Junior1; Programador Junior2 |
| 163 | 1.4.6.2.2.2 | Diseñar las pruebas basandose en los informes | 1d | 2019-02-22 16:00 | 2019-02-25 16:00 | 162 | 450d | Programador Junior1; Programador Junior2 |
| 164 | 1.3.3.2.3 | **Diseño de pruebas para comunicación con tablets del local** | 1.5d | 2019-02-25 16:00 | 2019-02-27 11:00 | 154 | 300d |  |
| 165 | 1.4.6.2.3.1 | Redactar informe de los minimos que deben cubrir las pruebas | 0.5d | 2019-02-25 16:00 | 2019-02-26 11:00 |  | 300d | Analista-Diseñador |
| 166 | 1.4.6.2.3.2 | Diseñar las pruebas basandose en los informes | 1d | 2019-02-26 11:00 | 2019-02-27 11:00 | 165 | 300d | Analista-Diseñador |
| 167 | 1.3.3.3 | **Diseño de pruebas de integración** | 1.5d | 2019-02-25 16:00 | 2019-02-27 11:00 |  |  |  |
| 168 | 1.3.3.3.1 | **Diseño de pruebas para comunicación entre módulos** | 1.5d | 2019-02-25 16:00 | 2019-02-27 11:00 | 158 |  |  |
| 169 | 1.4.6.3.1.1 | Redactar informe de los minimos que deben cubrir las pruebas | 0.5d | 2019-02-25 16:00 | 2019-02-26 11:00 |  |  | Analista-Programador |
| 170 | 1.4.6.3.1.2 | Diseñar las pruebas basandose en los informes | 1d | 2019-02-26 11:00 | 2019-02-27 11:00 | 169 |  | Analista-Programador |
| 171 | 1.3.3.4 | **Diseño de pruebas de unidad** | 3d | 2019-02-27 11:00 | 2019-03-04 11:00 | 167 |  |  |
| 172 | 1.3.3.4.1 | **Diseño de pruebas de módulo de monitorización general del sistema** | 1.5d | 2019-02-27 11:00 | 2019-02-28 16:00 |  |  |  |
| 173 | 1.4.6.4.1.1 | Redactar informe de los minimos que deben cubrir las pruebas | 0.5d | 2019-02-27 11:00 | 2019-02-27 16:00 |  |  | Analista-Diseñador |
| 174 | 1.4.6.4.1.2 | Diseñar las pruebas basandose en los informes | 1d | 2019-02-27 16:00 | 2019-02-28 16:00 | 173 |  | Analista-Diseñador |
| 175 | 1.3.3.4.2 | **Diseño de pruebas de módulo de entretenimiento** | 1.5d | 2019-02-28 16:00 | 2019-03-04 11:00 | 172 |  |  |
| 176 | 1.4.6.4.2.1 | Redactar informe de los minimos que deben cubrir las pruebas | 0.5d | 2019-02-28 16:00 | 2019-03-01 11:00 |  |  | Analista-Diseñador |
| 177 | 1.4.6.4.2.2 | Diseñar las pruebas basandose en los informes | 1d | 2019-03-01 11:00 | 2019-03-04 11:00 | 176 |  | Analista-Diseñador |

| ID | WBS | Task | Duration | Start | Finish | Predecessors | Total slack | Resources |
| --- | --- | --- | --- | --- | --- | --- | --- | --- |
| 178 | 1.3.3.4.3 | **Diseño de pruebas de módulo para muestra de datos y comandas** | 1.5d | 2019-02-27 11:00 | 2019-02-28 16:00 |  |  |  |
| 179 | 1.4.6.4.3.1 | Redactar informe de los minimos que deben cubrir las pruebas | 0.5d | 2019-02-27 11:00 | 2019-02-27 16:00 |  |  | Analista-Programador |
| 180 | 1.4.6.4.3.2 | Diseñar las pruebas basandose en los informes | 1d | 2019-02-27 16:00 | 2019-02-28 16:00 | 179 |  | Analista-Programador |
| 181 | 1.3.3.4.4 | **Diseño de pruebas de módulo de gestión de proveedores** | 1.5d | 2019-02-28 16:00 | 2019-03-04 11:00 | 178 |  |  |
| 182 | 1.4.6.4.4.1 | Redactar informe de los minimos que deben cubrir las pruebas | 0.5d | 2019-02-28 16:00 | 2019-03-01 11:00 |  |  | Analista-Programador |
| 183 | 1.4.6.4.4.2 | Diseñar las pruebas basandose en los informes | 1d | 2019-03-01 11:00 | 2019-03-04 11:00 | 182 |  | Analista-Programador |
| 184 | 1.3.3.4.5 | **Diseño de pruebas de módulo del camarero** | 1.5d | 2019-02-27 11:00 | 2019-02-28 16:00 |  |  |  |
| 185 | 1.4.6.4.5.1 | Redactar informe de los minimos que deben cubrir las pruebas | 0.5d | 2019-02-27 11:00 | 2019-02-27 16:00 |  |  | Programador Junior1; Programador Junior2 |
| 186 | 1.4.6.4.5.2 | Diseñar las pruebas basandose en los informes | 1d | 2019-02-27 16:00 | 2019-02-28 16:00 | 185 |  | Programador Junior1; Programador Junior2 |
| 187 | 1.3.3.4.6 | **Diseño de pruebas del módulo de cocinas/barra** | 1.5d | 2019-02-28 16:00 | 2019-03-04 11:00 | 184 |  |  |
| 188 | 1.4.6.4.6.1 | Redactar informe de los minimos que deben cubrir las pruebas | 0.5d | 2019-02-28 16:00 | 2019-03-01 11:00 |  |  | Programador Junior1; Programador Junior2 |
| 189 | 1.4.6.4.6.2 | Diseñar las pruebas basandose en los informes | 1d | 2019-03-01 11:00 | 2019-03-04 11:00 | 188 |  | Programador Junior1; Programador Junior2 |
| 190 | 1.4.7 | Informar al jefe del progreso semanal | 0.12d | 2019-03-04 11:00 | 2019-03-04 13:00 | 143 | 287.5d | Analista-Diseñador; Director de proyecto |
| 191 | 1.3.4 | **Planificación** | 3d | 2019-03-04 11:00 | 2019-03-07 11:00 | 143 |  |  |
| 192 | 1.3.4.1 | **Revisión de la planificación** | 2.5d | 2019-03-04 11:00 | 2019-03-06 16:00 |  |  |  |
| 193 | 1.4.8.1.1 | Revisar que la planificación se ajuste al tiempo adecuado | 1.5d | 2019-03-04 11:00 | 2019-03-05 16:00 |  |  | Analista-Programador |
| 194 | 1.4.8.1.2 | Revisar que la planificación se ajuste adecuadamente a nuestros recursos | 1d | 2019-03-05 16:00 | 2019-03-06 16:00 | 193 |  | Analista-Programador |
| 195 | 1.3.4.2 | **Validación de la planificación** | 0.5d | 2019-03-06 16:00 | 2019-03-07 11:00 | 192 |  |  |
| 196 | 1.4.8.2.1 | Reunirse con el jefe para validar la planificación revisada, incluye informe semanal | 0.5d | 2019-03-06 16:00 | 2019-03-07 11:00 |  |  | Analista-Programador; Director de proyecto |
| 197 | 1.4 | **Codificación del sistema** | 21.19d | 2019-03-07 11:00 | 2019-04-05 13:30 | 107 |  |  |
| 198 | 1.5.1 | **Riesgos Codificación** | 1d | 2019-03-07 11:00 | 2019-03-08 11:00 |  |  |  |
| 199 | 1.5.1.1 | Control de riesgos y daños | 1d | 2019-03-07 11:00 | 2019-03-08 11:00 |  |  | Director de proyecto [50%] |
| 200 | 1.5.1.2 | Formación de empleados | 1d | 2019-03-07 11:00 | 2019-03-08 11:00 |  |  |  |
| 201 | 1.4.1 | **Ambiente de desarrollo** | 6.38d | 2019-03-08 11:00 | 2019-03-18 15:00 | 198 |  |  |
| 202 | 1.4.1.1 | **Instalación del entorno de trabajo** | 2.12d | 2019-03-08 11:00 | 2019-03-12 13:00 |  |  |  |
| 203 | 1.4.1.1.1 | **Selección de tecnologías** | 0.5d | 2019-03-08 11:00 | 2019-03-08 16:00 |  |  |  |
| 204 | 1.5.2.1.1.1 | Seleccionar las tecnologías basandose en la fase de análisis | 0.5d | 2019-03-08 11:00 | 2019-03-08 16:00 |  |  | Analista-Diseñador |

| ID | WBS | Task | Duration | Start | Finish | Predecessors | Total slack | Resources |
| --- | --- | --- | --- | --- | --- | --- | --- | --- |
| 205 | 1.4.1.1.2 | **Adquisición de tecnologías** | 0.5d | 2019-03-08 16:00 | 2019-03-11 11:00 | 203 |  |  |
| 206 | 1.5.2.1.2.1 | Realizar la compra de licencias de software de empresa | 0.5d | 2019-03-08 16:00 | 2019-03-11 11:00 |  |  | Director de proyecto |
| 207 | 1.5.2.1.2.2 | Comprar el hardware necesario | 0.5d | 2019-03-08 16:00 | 2019-03-11 11:00 |  |  | Analista-Programador |
| 208 | 1.4.1.1.3 | **Instalación en ordenadores locales** | 1d | 2019-03-11 11:00 | 2019-03-12 11:00 | 205 |  |  |
| 209 | 1.5.2.1.3.1 | Instalar el software adquirido en los ordenadores locales | 1d | 2019-03-11 11:00 | 2019-03-12 11:00 |  |  | Analista-Programador |
| 210 | 1.5.2.1.4 | Informar al jefe del progreso semanal | 0.12d | 2019-03-12 11:00 | 2019-03-12 13:00 | 208 |  | Analista-Programador; Director de proyecto |
| 211 | 1.4.1.2 | **Configuración del entorno de trabajo** | 2d | 2019-03-12 13:00 | 2019-03-14 13:00 | 202 |  |  |
| 212 | 1.4.1.2.1 | **Ajuste de propiedades generales** | 2d | 2019-03-12 13:00 | 2019-03-14 13:00 |  |  |  |
| 213 | 1.5.2.2.1.1 | Configurar el SO y programas básico de uso general | 2d | 2019-03-12 13:00 | 2019-03-14 13:00 |  |  | Director de proyecto |
| 214 | 1.4.1.2.2 | **Ajuste de propiedades específicas** | 2d | 2019-03-12 13:00 | 2019-03-14 13:00 |  |  |  |
| 215 | 1.5.2.2.2.1 | Preparar el software específico en los equipos de personal especializado | 2d | 2019-03-12 13:00 | 2019-03-14 13:00 |  |  | Programador Junior1; Programador Junior2 |
| 216 | 1.4.1.3 | **Revisiones de eficiencia y velocidad del entorno** | 2.25d | 2019-03-14 13:00 | 2019-03-18 15:00 | 211 |  |  |
| 217 | 1.4.1.3.1 | **Evaluación de eficiencia y velocidad** | 1d | 2019-03-14 13:00 | 2019-03-15 13:00 |  |  |  |
| 218 | 1.5.2.3.1.1 | Realizar evaluación de eficiencia y velocidad durante la preparación de los ordenadores | 1d | 2019-03-14 13:00 | 2019-03-15 13:00 |  |  | Programador Junior1 |
| 219 | 1.4.1.3.2 | **Reconfiguración de tecnologías o herramientas** | 1d | 2019-03-15 13:00 | 2019-03-18 13:00 | 217 |  |  |
| 220 | 1.5.2.3.2.1 | Ajustar las configuraciones iniciales basándose en las evaluaciones | 1d | 2019-03-15 13:00 | 2019-03-18 13:00 |  |  | Programador Junior2 |
| 221 | 1.4.1.3.3 | **Selección parcial de otras herramientas** | 0.25d | 2019-03-18 13:00 | 2019-03-18 15:00 | 219 |  |  |
| 222 | 1.5.2.3.3.1 | Cubrir problemas encontrados con las herramientas de terceros necesarias | 0.25d | 2019-03-18 13:00 | 2019-03-18 15:00 |  |  | Programador Junior1; Programador Junior2 |
| 223 | 1.4.2 | **Módulos** | 9.62d | 2019-03-18 15:00 | 2019-04-01 11:00 | 201 |  |  |
| 224 | 1.5.3.1 | Informar al jefe del progreso semanal | 0.12d | 2019-03-18 15:00 | 2019-03-18 16:00 |  | 112.5d | Analista-Programador; Director de proyecto |
| 225 | 1.4.2.1 | **Módulo del camarero** | 2.5d | 2019-03-18 15:00 | 2019-03-21 10:00 |  | 712.5d |  |
| 226 | 1.4.2.1.1 | **Almacén de datos de camareros** | 2.5d | 2019-03-18 15:00 | 2019-03-21 10:00 |  |  |  |
| 227 | 1.5.3.2.1.1 | Preparar la BD y funciones para uso de camareros | 2.5d | 2019-03-18 15:00 | 2019-03-21 10:00 |  |  | Programador Senior |
| 228 | 1.4.2.1.2 | **Función de comunicar llamadas al camarero** | 1d | 2019-03-18 15:00 | 2019-03-19 15:00 |  | 862.5d |  |
| 229 | 1.5.3.2.2.1 | Implementar la función de llamadas al camararero mediante la interfaz diseñada | 1d | 2019-03-18 15:00 | 2019-03-19 15:00 |  | 862.5d | Programador Junior1 |

| ID | WBS | Task | Duration | Start | Finish | Predecessors | Total slack | Resources |
| --- | --- | --- | --- | --- | --- | --- | --- | --- |
| 230 | 1.4.2.1.3 | **Función de liberar una mesa ocupada** | 1d | 2019-03-18 15:00 | 2019-03-19 15:00 |  | 862.5d |  |
| 231 | 1.5.3.2.3.1 | Implementar la función que permite liberar mesas a camareros | 1d | 2019-03-18 15:00 | 2019-03-19 15:00 |  | 862.5d | Programador Junior2 |
| 232 | 1.4.2.1.4 | **Interfaz visual agradable** | 0.5d | 2019-03-18 15:00 | 2019-03-19 10:00 |  | 912.5d |  |
| 233 | 1.5.3.2.4.1 | Programar la interfaz visual | 0.5d | 2019-03-18 15:00 | 2019-03-19 10:00 |  | 912.5d | Analista-Diseñador; Analista-Programador |
| 234 | 1.4.2.2 | **Módulo de gestión de proveedores** | 3.5d | 2019-03-18 15:00 | 2019-03-22 10:00 |  |  |  |
| 235 | 1.4.2.2.1 | **Almacén de stock** | 1d | 2019-03-21 10:00 | 2019-03-22 10:00 | 226 |  |  |
| 236 | 1.5.3.3.1.1 | Programar el gestor de stock y conectarlo a la BD | 1d | 2019-03-21 10:00 | 2019-03-22 10:00 |  |  | Programador Senior |
| 237 | 1.4.2.2.2 | **Interfaz visual agradable** | 0.5d | 2019-03-18 15:00 | 2019-03-19 10:00 |  | 300d |  |
| 238 | 1.5.3.3.2.1 | Programar la interfaz visual | 0.5d | 2019-03-18 15:00 | 2019-03-19 10:00 |  | 300d | Analista-Diseñador; Analista-Programador |
| 239 | 1.4.2.3 | **Módulo de cocinas/barra** | 2.25d | 2019-03-18 16:00 | 2019-03-21 09:00 | 224 | 112.5d |  |
| 240 | 1.4.2.3.1 | **Función de cobrar con tarjeta u otros métodos** | 2d | 2019-03-18 16:00 | 2019-03-20 16:00 |  | 137.5d |  |
| 241 | 1.5.3.4.1.1 | Programar funciones de cobro | 1.5d | 2019-03-18 16:00 | 2019-03-20 11:00 |  | 137.5d | Programador Junior1 |
| 242 | 1.5.3.4.1.2 | Adaptar funciones de cobro a todos los métodos de pago | 0.5d | 2019-03-20 11:00 | 2019-03-20 16:00 | 241 | 137.5d | Programador Junior1 |
| 243 | 1.4.2.3.2 | **Función de proteger los datos de las transacciones** | 1.5d | 2019-03-18 16:00 | 2019-03-20 11:00 |  | 187.5d |  |
| 244 | 1.5.3.4.2.1 | Asegurarse de que se guardan apropiadamente los datos | 0.5d | 2019-03-18 16:00 | 2019-03-19 11:00 |  | 187.5d | Programador Junior2 |
| 245 | 1.5.3.4.2.2 | Proteger mediante encriptación o restricciones de acceso los datos | 1d | 2019-03-19 11:00 | 2019-03-20 11:00 | 244 | 187.5d | Programador Junior2 |
| 246 | 1.4.2.3.3 | **Almacén de datos de comandas** | 2d | 2019-03-18 16:00 | 2019-03-20 16:00 |  | 112.5d |  |
| 247 | 1.5.3.4.3.1 | Programar el almacen de datos de pedidos | 2d | 2019-03-18 16:00 | 2019-03-20 16:00 |  | 112.5d | Programador Junior1; Programador Junior2 |
| 248 | 1.4.2.3.4 | **Almacén de datos de mesas** | 0.25d | 2019-03-20 16:00 | 2019-03-21 09:00 | 246 | 112.5d |  |
| 249 | 1.5.3.4.4.1 | Adaptar el almacén de datos de pedidos a las mesas | 0.25d | 2019-03-20 16:00 | 2019-03-21 09:00 | 247 | 112.5d | Programador Junior1; Programador Junior2 |
| 250 | 1.4.2.4 | **Módulo para muestra de datos y comandas** | 3d | 2019-03-22 10:00 | 2019-03-27 10:00 | 234, 239 |  |  |
| 251 | 1.4.2.4.1 | **Función de seleccionar productos y pedidos** | 2d | 2019-03-22 10:00 | 2019-03-26 10:00 |  |  |  |
| 252 | 1.5.3.5.1.1 | Implementar navegación de menú | 2d | 2019-03-22 10:00 | 2019-03-26 10:00 |  |  | Programador Senior |
| 253 | 1.4.2.4.2 | **Función de plasmar información del pedido** | 1d | 2019-03-22 10:00 | 2019-03-25 10:00 |  | 50d |  |
| 254 | 1.5.3.5.2.1 | Implementar función de información de pedido | 1d | 2019-03-22 10:00 | 2019-03-25 10:00 |  | 50d | Programador Junior1 |

| ID | WBS | Task | Duration | Start | Finish | Predecessors | Total slack | Resources |
| --- | --- | --- | --- | --- | --- | --- | --- | --- |
| 255 | 1.4.2.4.3 | **Función de enviar la comanda** | 1d | 2019-03-22 10:00 | 2019-03-25 10:00 |  | 175d |  |
| 256 | 1.5.3.5.3.1 | Imlementar función de envio de comanda | 1d | 2019-03-22 10:00 | 2019-03-25 10:00 |  | 175d | Programador Junior2 |
| 257 | 1.4.2.4.4 | **Función de reservar mesa libre** | 1d | 2019-03-22 10:00 | 2019-03-25 10:00 |  | 200d |  |
| 258 | 1.5.3.5.4.1 | Implementar función de reserva | 1d | 2019-03-22 10:00 | 2019-03-25 10:00 |  | 200d | Analista-Programador |
| 259 | 1.4.2.4.5 | **Función de ver estado de la mesa** | 1d | 2019-03-26 10:00 | 2019-03-27 10:00 |  |  |  |
| 260 | 1.5.3.5.5.1 | Implementar función de estado | 1d | 2019-03-26 10:00 | 2019-03-27 10:00 | 252 |  | Programador Senior |
| 261 | 1.4.2.4.6 | **Función de informar al cliente** | 1.5d | 2019-03-25 10:00 | 2019-03-26 15:00 |  | 50d |  |
| 262 | 1.5.3.5.6.1 | Adaptar función de comunicación para el cliente | 1.5d | 2019-03-25 10:00 | 2019-03-26 15:00 | 254 | 50d | Programador Junior1 |
| 263 | 1.4.2.4.7 | **Función de códigos QR** | 0.25d | 2019-03-25 10:00 | 2019-03-25 13:00 |  | 175d |  |
| 264 | 1.5.3.5.7.1 | Adaptar el lector QR a nuestros programas | 0.25d | 2019-03-25 10:00 | 2019-03-25 13:00 | 256 | 175d | Programador Junior2 |
| 265 | 1.4.2.4.8 | **Interfaz visual agradable** | 0.25d | 2019-03-22 10:00 | 2019-03-22 13:00 |  | 275d |  |
| 266 | 1.5.3.5.8.1 | Programar la interfaz visual | 0.25d | 2019-03-22 10:00 | 2019-03-22 13:00 |  | 275d | Analista-Diseñador; Analista-Programador |
| 267 | 1.5.3.6 | Informar al jefe de progreso semanal | 0.12d | 2019-03-27 10:00 | 2019-03-27 11:00 | 250 |  | Analista-Programador; Director de proyecto |
| 268 | 1.4.2.5 | **Módulo de entretenimiento** | 2d | 2019-03-27 11:00 | 2019-03-29 11:00 | 267 |  |  |
| 269 | 1.4.2.5.1 | **Función de ofrecer entretenimiento al cliente** | 0.12d | 2019-03-27 11:00 | 2019-03-27 13:00 |  | 37.5d |  |
| 270 | 1.5.3.7.1.1 | Asegurar que los programas adecuados están instalados y son accesibles | 0.12d | 2019-03-27 11:00 | 2019-03-27 13:00 |  | 37.5d | Programador Junior1 |
| 271 | 1.4.2.5.2 | **Función de interactuar con el local** | 2d | 2019-03-27 11:00 | 2019-03-29 11:00 |  |  |  |
| 272 | 1.5.3.7.2.1 | Preparar conexiones visuales de camaras | 0.5d | 2019-03-27 13:00 | 2019-03-27 17:00 | 270 | 37.5d | Programador Junior1 |
| 273 | 1.5.3.7.2.2 | Preparar lista de música | 0.06d | 2019-03-27 11:00 | 2019-03-27 11:30 |  | 93.75d | Programador Junior2 |
| 274 | 1.5.3.7.2.3 | Preparar programa de control de interacción | 1d | 2019-03-27 11:00 | 2019-03-28 11:00 |  |  | Analista-Programador |
| 275 | 1.5.3.7.2.4 | Completar programa de control de interacción con los módulos | 1d | 2019-03-28 11:00 | 2019-03-29 11:00 | 274, 273, 272 |  | Programador Senior |
| 276 | 1.4.2.5.3 | **Interfaz visual agradable** | 0.5d | 2019-03-27 11:00 | 2019-03-27 16:00 |  | 150d |  |
| 277 | 1.5.3.7.3.1 | Programar interfaz visual | 0.5d | 2019-03-27 11:00 | 2019-03-27 16:00 |  | 150d | Analista-Diseñador; Analista-Programador |
| 278 | 1.4.2.6 | **Módulo de monitorización general y gerencia** | 1d | 2019-03-29 11:00 | 2019-04-01 11:00 | 268 |  |  |
| 279 | 1.4.2.6.1 | **Almacén de datos legales** | 1d | 2019-03-29 11:00 | 2019-04-01 11:00 |  |  |  |
| 280 | 1.5.3.8.1.1 | Preparar BD y gestión de BD | 1d | 2019-03-29 11:00 | 2019-04-01 11:00 |  |  | Programador Junior1 |
| 281 | 1.5.3.8.1.2 | Revisar cumplimiento de requerimientos legales de la BD | 0.25d | 2019-03-29 11:00 | 2019-03-29 14:00 |  | 75d | Programador Senior |

| ID | WBS | Task | Duration | Start | Finish | Predecessors | Total slack | Resources |
| --- | --- | --- | --- | --- | --- | --- | --- | --- |
| 282 | 1.4.2.6.2 | **Almacén de nóminas** | 1d | 2019-03-29 11:00 | 2019-04-01 11:00 |  |  |  |
| 283 | 1.5.3.8.2.1 | Preparar BD y gestión de BD para nóminas | 1d | 2019-03-29 11:00 | 2019-04-01 11:00 |  |  | Programador Junior2 |
| 284 | 1.5.3.8.2.2 | Automatizar las nóminas y su almacenamiento de datos | 1d | 2019-03-29 11:00 | 2019-04-01 11:00 |  |  | Analista-Programador |
| 285 | 1.4.2.6.3 | **Interfaz visual agrdable** | 0.5d | 2019-03-29 11:00 | 2019-03-29 16:00 |  | 50d |  |
| 286 | 1.5.3.8.3.1 | Programar la interfaz visual | 0.5d | 2019-03-29 11:00 | 2019-03-29 16:00 |  | 50d | Analista-Diseñador; Analista-Programador |
| 287 | 1.4.3 | **Depuración** | 4.19d | 2019-04-01 11:00 | 2019-04-05 13:30 | 223 |  |  |
| 288 | 1.5.4.1 | Informar al jefe del progreso semanal | 0.12d | 2019-04-01 11:00 | 2019-04-01 13:00 |  | 406.25d | Analista-Programador; Director de proyecto |
| 289 | 1.4.3.1 | **Localización de defectos** | 0.69d | 2019-04-01 11:00 | 2019-04-02 08:30 |  |  |  |
| 290 | 1.4.3.1.1 | **Listado de defectos** | 0.5d | 2019-04-01 11:00 | 2019-04-01 16:00 |  |  |  |
| 291 | 1.5.4.2.1.1 | Realizar un listado intensivo de defectos encontrados en la codificación | 0.5d | 2019-04-01 11:00 | 2019-04-01 16:00 |  |  | Programador Senior |
| 292 | 1.4.3.1.2 | **Ubicación de defectos** | 0.19d | 2019-04-01 16:00 | 2019-04-02 08:30 | 290 |  |  |
| 293 | 1.5.4.2.2.1 | Completar listado con posiciones exactas (linea, programa, módulo, etc) de los errores | 0.06d | 2019-04-01 16:00 | 2019-04-01 16:30 |  |  | Programador Senior |
| 294 | 1.5.4.2.2.2 | Incluir en listado posibles relaciones del error con otro módulo o trozo de código | 0.12d | 2019-04-01 16:30 | 2019-04-02 08:30 | 293 |  | Programador Senior |
| 295 | 1.4.3.2 | **Corrección de defectos** | 3.5d | 2019-04-02 08:30 | 2019-04-05 13:30 | 289 |  |  |
| 296 | 1.4.3.2.1 | **Modificaciones necesarias** | 2.5d | 2019-04-02 08:30 | 2019-04-04 13:30 |  |  |  |
| 297 | 1.5.4.3.1.1 | Implementar las modificaciones y arreglos de la codificación | 2.5d | 2019-04-02 08:30 | 2019-04-04 13:30 |  |  | Analista-Programador; Programador Junior1; Programador Junior2; Programador Senior |
| 298 | 1.4.3.2.2 | **Revisión de corrección del defecto** | 1d | 2019-04-04 13:30 | 2019-04-05 13:30 | 296 |  |  |
| 299 | 1.5.4.3.2.1 | Revisar todos los errores del listado para comprobar que han sido arreglados correctamente | 1d | 2019-04-04 13:30 | 2019-04-05 13:30 |  |  | Programador Senior |
| 300 | 1.5 | **Pruebas del sistema y sus componentes** | 16.15d | 2019-04-05 13:30 | 2019-04-29 14:40 | 197 |  |  |
| 301 | 1.6.1 | Control de riesgos y daños | 1d | 2019-04-05 13:30 | 2019-04-08 13:30 |  |  | Director de proyecto [50%] |
| 302 | 1.6.2 | Informar al jefe del progreso semanal | 0.12d | 2019-04-08 13:30 | 2019-04-08 14:30 | 301 |  | Analista-Diseñador; Analista-Programador; Director de proyecto |
| 303 | 1.5.1 | **Planificación de pruebas** | 2.5d | 2019-04-08 14:30 | 2019-04-11 09:30 | 302 |  |  |
| 304 | 1.5.1.1 | **Pruebas de aceptación** | 0.5d | 2019-04-08 14:30 | 2019-04-09 09:30 |  |  |  |
| 305 | 1.5.1.1.1 | **Pruebas para los gerentes de local** | 0.5d | 2019-04-08 14:30 | 2019-04-09 09:30 |  |  |  |
| 306 | 1.6.3.1.1.1 | Planear las pruebas basándose en su diseño | 0.5d | 2019-04-08 14:30 | 2019-04-09 09:30 |  |  | Programador Junior1 |

| ID | WBS | Task | Duration | Start | Finish | Predecessors | Resources |
| --- | --- | --- | --- | --- | --- | --- | --- |
| 307 | 1.5.1.1.2 | **Pruebas sobre el personal de local** | 0.5d | 2019-04-08 14:30 | 2019-04-09 09:30 |  |  |
| 308 | 1.6.3.1.2.1 | Planear las pruebas basándose en su diseño | 0.5d | 2019-04-08 14:30 | 2019-04-09 09:30 |  | Programador Junior2 |
| 309 | 1.5.1.1.3 | **Pruebas sobre los usuarios del local** | 0.5d | 2019-04-08 14:30 | 2019-04-09 09:30 |  |  |
| 310 | 1.6.3.1.3.1 | Planear las pruebas basándose en su diseño | 0.5d | 2019-04-08 14:30 | 2019-04-09 09:30 |  | Programador Senior |
| 311 | 1.5.1.1.4 | **Pruebas para los proveedores** | 0.5d | 2019-04-08 14:30 | 2019-04-09 09:30 |  |  |
| 312 | 1.6.3.1.4.1 | Planear las pruebas basándose en su diseño | 0.5d | 2019-04-08 14:30 | 2019-04-09 09:30 |  | Analista-Diseñador |
| 313 | 1.5.1.2 | **Pruebas del sistema** | 0.5d | 2019-04-09 09:30 | 2019-04-09 14:30 | 304 |  |
| 314 | 1.5.1.2.1 | **Pruebas para comunicación con PayPal** | 0.5d | 2019-04-09 09:30 | 2019-04-09 14:30 |  |  |
| 315 | 1.6.3.2.1.1 | Planear las pruebas basándose en su diseño | 0.5d | 2019-04-09 09:30 | 2019-04-09 14:30 |  | Programador Junior1 |
| 316 | 1.5.1.2.2 | **Pruebas para comunicación con terminales TPV** | 0.5d | 2019-04-09 09:30 | 2019-04-09 14:30 |  |  |
| 317 | 1.6.3.2.2.1 | Planear las pruebas basándose en su diseño | 0.5d | 2019-04-09 09:30 | 2019-04-09 14:30 |  | Programador Junior2 |
| 318 | 1.5.1.2.3 | **Pruebas para comunicación con tablets de local** | 0.5d | 2019-04-09 09:30 | 2019-04-09 14:30 |  |  |
| 319 | 1.6.3.2.3.1 | Planear las pruebas basándose en su diseño | 0.5d | 2019-04-09 09:30 | 2019-04-09 14:30 |  | Programador Senior |
| 320 | 1.5.1.3 | **Pruebas de integración** | 0.5d | 2019-04-09 14:30 | 2019-04-10 09:30 | 313 |  |
| 321 | 1.5.1.3.1 | **Pruebas para comunicación entre módulos** | 0.5d | 2019-04-09 14:30 | 2019-04-10 09:30 |  |  |
| 322 | 1.6.3.3.1.1 | Planear las pruebas basándose en su diseño | 0.5d | 2019-04-09 14:30 | 2019-04-10 09:30 |  | Programador Senior |
| 323 | 1.5.1.4 | **Pruebas de unidad** | 1d | 2019-04-10 09:30 | 2019-04-11 09:30 | 320 |  |
| 324 | 1.5.1.4.1 | **Pruebas de módulo de monitorización general del sistema** | 0.5d | 2019-04-10 09:30 | 2019-04-10 14:30 |  |  |
| 325 | 1.6.3.4.1.1 | Planear las pruebas basándose en su diseño | 0.5d | 2019-04-10 09:30 | 2019-04-10 14:30 |  | Programador Junior1 |
| 326 | 1.5.1.4.2 | **Pruebas de módulo de entretenimiento** | 0.5d | 2019-04-10 09:30 | 2019-04-10 14:30 |  |  |
| 327 | 1.6.3.4.2.1 | Planear las pruebas basándose en su diseño | 0.5d | 2019-04-10 09:30 | 2019-04-10 14:30 |  | Programador Junior2 |
| 328 | 1.5.1.4.3 | **Pruebas de módulo para muestra de datos y comandas** | 0.5d | 2019-04-10 09:30 | 2019-04-10 14:30 |  |  |
| 329 | 1.6.3.4.3.1 | Planear las pruebas basándose en su diseño | 0.5d | 2019-04-10 09:30 | 2019-04-10 14:30 |  | Programador Senior |
| 330 | 1.5.1.4.4 | **Pruebas de módulo de gestión de proveedores** | 0.5d | 2019-04-10 14:30 | 2019-04-11 09:30 | 324 |  |
| 331 | 1.6.3.4.4.1 | Planear las pruebas basándose en su diseño | 0.5d | 2019-04-10 14:30 | 2019-04-11 09:30 |  | Programador Junior1 |

| ID | WBS | Task | Duration | Start | Finish | Predecessors | Total slack | Resources |
| --- | --- | --- | --- | --- | --- | --- | --- | --- |
| 332 | 1.5.1.4.5 | **Pruebas de módulo del camarero** | 0.5d | 2019-04-10 14:30 | 2019-04-11 09:30 | 326 |  |  |
| 333 | 1.6.3.4.5.1 | Planear las pruebas basándose en su diseño | 0.5d | 2019-04-10 14:30 | 2019-04-11 09:30 |  |  | Programador Junior2 |
| 334 | 1.5.1.4.6 | **Pruebas del módulo de cocinas/barra** | 0.5d | 2019-04-10 14:30 | 2019-04-11 09:30 | 328 |  |  |
| 335 | 1.6.3.4.6.1 | Planear las pruebas basándose en su diseño | 0.5d | 2019-04-10 14:30 | 2019-04-11 09:30 |  |  | Programador Senior |
| 336 | 1.5.2 | **Ejecución de pruebas** | 10d | 2019-04-11 09:30 | 2019-04-25 09:30 | 303 |  |  |
| 337 | 1.5.2.1 | **Ejecución de casos de prueba** | 3d | 2019-04-11 09:30 | 2019-04-16 09:30 |  |  |  |
| 338 | 1.5.2.1.1 | **Ejecución de conjunto de casos de unidad** | 2d | 2019-04-11 09:30 | 2019-04-15 09:30 |  | 100d |  |
| 339 | 1.6.4.1.1.1 | Dividir los equipos para ejecutar las pruebas de cada unidad | 0.5d | 2019-04-11 09:30 | 2019-04-11 14:30 |  |  | Programador Senior |
| 340 | 1.6.4.1.1.2 | Ejecutar las pruebas de cada módulo individual | 2d | 2019-04-11 09:30 | 2019-04-15 09:30 |  | 100d | Analista-Programador |
| 341 | 1.5.2.1.2 | **Ejecución de conjunto de casos de integración** | 2.5d | 2019-04-11 09:30 | 2019-04-15 14:30 |  | 50d |  |
| 342 | 1.6.4.1.2.1 | Ejecutar las pruebas para comprobar que la integración de módulos no tiene fallos | 2.5d | 2019-04-11 09:30 | 2019-04-15 14:30 |  | 50d | Programador Junior1 |
| 343 | 1.5.2.1.3 | **Ejecución de conjunto de casos de sistema** | 2.5d | 2019-04-11 09:30 | 2019-04-15 14:30 |  | 50d |  |
| 344 | 1.6.4.1.3.1 | Ejecutar las pruebas de sistema | 2.5d | 2019-04-11 09:30 | 2019-04-15 14:30 |  | 50d | Programador Junior2 |
| 345 | 1.6.4.1.4 | Informar al jefe del progreso semanal | 0.12d | 2019-04-11 09:30 | 2019-04-11 10:30 |  | 287.5d | Analista-Programador; Director de proyecto |
| 346 | 1.5.2.1.4 | **Ejecución de conjunto de casos de validación** | 2.5d | 2019-04-11 14:30 | 2019-04-16 09:30 |  |  |  |
| 347 | 1.6.4.1.5.1 | Ejecutar las pruebas de validación del programa | 2.5d | 2019-04-11 14:30 | 2019-04-16 09:30 | 339 |  | Programador Senior |
| 348 | 1.5.2.2 | **Listado de errores** | 2.5d | 2019-04-16 09:30 | 2019-04-18 14:30 | 337 |  |  |
| 349 | 1.5.2.2.1 | **Enumeración de errores graves** | 2d | 2019-04-16 09:30 | 2019-04-18 09:30 |  |  |  |
| 350 | 1.6.4.2.1.1 | Crear un listado con los errores que se consideran más graves | 0.5d | 2019-04-16 09:30 | 2019-04-16 14:30 |  |  | Analista-Programador |
| 351 | 1.6.4.2.1.2 | Analizar cuales de los errores son tan graves como se estima y cuales pueden desestimarse | 1.5d | 2019-04-16 14:30 | 2019-04-18 09:30 | 350 |  | Analista-Programador |
| 352 | 1.5.2.2.2 | **Desestimación de errores leves o de otro tipo** | 0.5d | 2019-04-18 09:30 | 2019-04-18 14:30 |  |  |  |
| 353 | 1.6.4.2.2.1 | Analizar los errores leves para observar que alguna combinación de estos no cause problemas graves | 0.5d | 2019-04-18 09:30 | 2019-04-18 14:30 | 351 |  | Programador Senior |
| 354 | 1.6.4.2.3 | Informar al jefe del progreso semanal | 0.12d | 2019-04-16 09:30 | 2019-04-16 10:30 |  | 237.5d | Director de proyecto; Programador Senior |
| 355 | 1.5.2.3 | **Corrección de errores** | 2.5d | 2019-04-18 14:30 | 2019-04-23 09:30 | 348 |  |  |
| 356 | 1.5.2.3.1 | **Depuración de errores** | 2d | 2019-04-18 14:30 | 2019-04-22 14:30 |  |  |  |
| 357 | 1.6.4.3.1.1 | Arreglar todos los errores graves | 2d | 2019-04-18 14:30 | 2019-04-22 14:30 |  |  | Programador Senior |
| 358 | 1.6.4.3.1.2 | Arreglar los errores leves que causen errores graves como conjunto | 2d | 2019-04-18 14:30 | 2019-04-22 14:30 |  |  | Programador Junior1; Programador Junior2 |

| ID | WBS | Task | Duration | Start | Finish | Predecessors | Resources |
| --- | --- | --- | --- | --- | --- | --- | --- |
| 359 | 1.5.2.3.2 | **Verificación de corrección** | 0.5d | 2019-04-22 14:30 | 2019-04-23 09:30 | 356 |  |
| 360 | 1.6.4.3.2.1 | Comprobar que las correcciones han sido realizadas sin causar mas errores | 0.5d | 2019-04-22 14:30 | 2019-04-23 09:30 |  | Analista-Programador |
| 361 | 1.5.2.4 | **Verificación de terminación** | 2d | 2019-04-23 09:30 | 2019-04-25 09:30 | 355 |  |
| 362 | 1.5.2.4.1 | **Revisión de listado de errores** | 1.5d | 2019-04-23 09:30 | 2019-04-24 14:30 |  |  |
| 363 | 1.6.4.4.1.1 | Revisar el listado de errores e informe de correcciones | 1.5d | 2019-04-23 09:30 | 2019-04-24 14:30 |  | Analista-Programador |
| 364 | 1.5.2.4.2 | **Aprobación formal de finalización** | 0.5d | 2019-04-24 14:30 | 2019-04-25 09:30 | 362 |  |
| 365 | 1.6.4.4.2.1 | Reunirse con el encargado para formalizar la validación e informar del progreso semanal | 0.5d | 2019-04-24 14:30 | 2019-04-25 09:30 |  | Analista-Programador; Director de proyecto |
| 366 | 1.5.3 | **Análisis de errores y evaluación** | 2.52d | 2019-04-25 09:30 | 2019-04-29 14:40 | 336 |  |
| 367 | 1.5.3.1 | **Creación de documento de errores** | 1d | 2019-04-25 09:30 | 2019-04-26 09:30 |  |  |
| 368 | 1.6.5.1.1 | Redactar documento de errores | 1d | 2019-04-25 09:30 | 2019-04-26 09:30 |  | Analista-Programador |
| 369 | 1.5.3.2 | **Catalogación de errores** | 1d | 2019-04-25 09:30 | 2019-04-26 09:30 |  |  |
| 370 | 1.6.5.2.1 | Catalogar errores basandose en el análisis realizado en la ejecución de pruebas | 1d | 2019-04-25 09:30 | 2019-04-26 09:30 | 352, 349 | Analista-Programador |
| 371 | 1.5.3.3 | **Realización de análisis estadísticos** | 1.5d | 2019-04-26 09:30 | 2019-04-29 14:30 | 369, 367 |  |
| 372 | 1.6.5.3.1 | Realizar análisis estadístico de errores | 1d | 2019-04-26 09:30 | 2019-04-29 09:30 |  | Analista-Diseñador; Analista-Programador |
| 373 | 1.6.5.3.2 | Redactar informe estadístico | 0.5d | 2019-04-29 09:30 | 2019-04-29 14:30 | 372 | Analista-Diseñador; Analista-Programador |
| 374 | 1.5.3.4 | **Adición al archivo de proyectos de la empresa** | 0.02d | 2019-04-29 14:30 | 2019-04-29 14:40 | 371, 369, 367 |  |
| 375 | 1.6.5.4.1 | Añadir los documentos creados al archivo de la empresa | 0.02d | 2019-04-29 14:30 | 2019-04-29 14:40 |  | Director de proyecto |
